# 智维集控平台

Schedule from a web Gantt chart, 2026-06-08 to 2026-06-18.
Every day is a working day

## Schedule

| ID | WBS | Task | Duration | Start | Finish | Predecessors | Status |
| --- | --- | --- | --- | --- | --- | --- | --- |
| 2 | 1 | **平台基础能力** | 11d | 2026-06-08 | 2026-06-18 |  |  |
| 3 | 1.1 | 数据权限管理 | 2d | 2026-06-08 | 2026-06-09 |  |  |
| 4 | 1.2 | 租户管理 | 2d | 2026-06-10 | 2026-06-11 | 3 | waiting |
| 5 | 1.3 | 国际化 | 2d | 2026-06-12 | 2026-06-13 | 4 | waiting |
| 6 | 1.4 | 组织权限管理 | 3d | 2026-06-14 | 2026-06-16 | 5 | waiting |
| 7 | 1.5 | 审计日志 | 2d | 2026-06-17 | 2026-06-18 | 6 | waiting |
